Schedule from MS Project, 2006-10-27 to 2013-02-06.

## Calendars

- 标准: Mon-Fri 08:00-12:00, 13:00-17:00; Sat-Sun off. Exceptions (off unless hours are given): 2012-11-30 to 2013-01-31 08:00-12:00, 13:00-17:00.

## Resources

| Resource |
| --- |
| 郭俊 |
| 郭俊/Basin |
| 胡雅慧 |
| 郭俊/殷渝 |
| 殷渝/兴林 |
| Miya |
| 林丽 |
| 郭俊/殷渝/兴林 |
| 殷渝/兴林/张建 |
| 殷渝/兴林/张建 |
| 林丽/文彬 |
| 郭俊/巫从文 |
| 胡雅慧/文鑫 |
| Miya/龙慧 |
| Miya/龙慧/刘文静 |
| Miya/林振邦 |
| 钱金晶/倪敏 |
| 倪敏/文彬 |
| 郭俊/王理强 |
| 郭俊/倪敏 |
| 郭俊/殷渝/倪敏 |
| 殷渝 |
| 兴林 |
| 倪敏 |
| 文彬 |
| 张建 |
| 郭俊/Basin/倪敏 |
| 郭俊/miya |
| guo |
| miya/郭俊 |
| Miya林振邦 |
| 王理强/Basin |
| 郭俊/殷渝/UFO |
| UFO |
| UFO/郭俊 |
| UFO/殷渝 |

## Schedule

| ID | WBS | Task | Duration | Start | Finish | Predecessors | Total slack | Free slack | Constraint | Resources | Work |
| --- | --- | --- | --- | --- | --- | --- | --- | --- | --- | --- | --- |
| 1 | 1 | **第二迭代阶段--开发** | 32d? | 2012-12-01 | 2013-01-01 |  | 29d | 0d |  |  | 928h |
| 2 | 1.1 | **网站模块(前后台)** | 29d? | 2012-12-01 | 2012-12-29 |  | 29d | 0d |  | 郭俊/殷渝/UFO | 880h |
| 3 | 1.1.1 | **人员模块** | 8d? | 2012-12-01 | 2012-12-08 |  | 41d | 0d |  | 殷渝 | 64h |
| 4 | 1.1.1.1 | 客户(医师)管理 | 2d? | 2012-12-01 | 2012-12-02 |  | 39d | 0d | start no earlier than 2012-12-01 |  |  |
| 5 | 1.1.1.2 | 销售代表管理 | 3d | 2012-12-03 | 2012-12-05 | 4 | 39d | 0d |  |  |  |
| 6 | 1.1.1.3 | 人员调度管理 | 3d | 2012-12-06 | 2012-12-08 | 5 | 32d |  |  |  |  |
| 7 | 1.1.2 | **权限模块** | 4d? | 2012-12-09 | 2012-12-12 | 3 | 46d |  |  | 殷渝 | 32h |
| 8 | 1.1.2.1 | 角色管理 | 1d? | 2012-12-09 | 2012-12-09 |  | 35d | 0d |  |  |  |
| 9 | 1.1.2.2 | 用户角色分配 | 1d? | 2012-12-10 | 2012-12-10 | 8 | 35d | 0d |  |  |  |
| 10 | 1.1.2.3 | 角色权限分配 | 1d? | 2012-12-11 | 2012-12-11 | 9 | 35d | 0d |  |  |  |
| 11 | 1.1.2.4 | 管理员账户管理 | 1d? | 2012-12-12 | 2012-12-12 | 10 | 35d |  |  |  |  |
| 12 | 1.1.3 | **文档资料模块** | 8d? | 2012-12-16 | 2012-12-23 |  | 29d |  |  | UFO/郭俊 | 176h |
| 13 | 1.1.3.1 | 文献资料查看 | 3d | 2012-12-20 | 2012-12-22 | 15 | 22d | 0d | start no earlier than 2012-12-01 | UFO | 24h |
| 14 | 1.1.3.2 | 文献类别管理 | 1d? | 2012-12-17 | 2012-12-17 |  | 25d | 0d | start no earlier than 2012-12-17 | UFO | 8h |
| 15 | 1.1.3.3 | 文献资料管理 | 2d | 2012-12-18 | 2012-12-19 | 14 | 22d | 0d |  | UFO | 16h |
| 16 | 1.1.3.4 | 文献上传管理 | 3d | 2012-12-16 | 2012-12-18 |  | 23d | 0d | start no earlier than 2012-12-16 | 郭俊 | 24h |
| 17 | 1.1.3.5 | 文献自动打包 | 5d | 2012-12-19 | 2012-12-23 | 16 | 35d |  |  | 郭俊 | 40h |
| 18 | 1.1.4 | **题目模块** | 6d | 2012-12-19 | 2012-12-24 | 16 | 27d | 0d |  | 郭俊 | 48h |
| 19 | 1.1.4.1 | 题目管理 | 2d | 2012-12-19 | 2012-12-20 |  | 23d | 0d | start no earlier than 2012-12-04 |  |  |
| 20 | 1.1.4.2 | 答题统计 | 4d | 2012-12-21 | 2012-12-24 | 3, 19 | 20d |  |  |  |  |
| 21 | 1.1.5 | 项目介绍模块 | 2d | 2012-12-23 | 2012-12-24 | 13 | 34d |  |  | UFO | 16h |
| 22 | 1.1.6 | 项目管理模块 | 3d | 2012-12-25 | 2012-12-27 | 4, 18, 13 | 27d | 0d |  | UFO | 24h |
| 23 | 1.1.7 | **公告模块** | 4d | 2012-12-15 | 2012-12-18 |  | 33d | 0d |  | 殷渝 | 32h |
| 24 | 1.1.7.1 | 活动公告栏 | 2d | 2012-12-17 | 2012-12-18 | 25 | 35d |  | start no earlier than 2012-12-15 |  |  |
| 25 | 1.1.7.2 | 活动公告管理 | 2d | 2012-12-15 | 2012-12-16 |  | 33d | 0d | start no earlier than 2012-12-15 |  |  |

| ID | WBS | Task | Duration | Start | Finish | Predecessors | Total slack | Free slack | Constraint | Resources | Work |
| --- | --- | --- | --- | --- | --- | --- | --- | --- | --- | --- | --- |
| 26 | 1.1.8 | **积分兑换模块** | 11d | 2012-12-19 | 2012-12-29 |  | 29d |  |  | UFO/殷渝 | 136h |
| 27 | 1.1.8.1 | 积分兑换 | 2d | 2012-12-21 | 2012-12-22 | 28 | 32d | 5d |  | 殷渝 | 16h |
| 28 | 1.1.8.2 | 兑换产品管理 | 2d | 2012-12-19 | 2012-12-20 | 23 | 32d | 0d |  | 殷渝 | 16h |
| 29 | 1.1.8.3 | 兑换统计 | 2d | 2012-12-28 | 2012-12-29 | 27, 22 | 27d |  |  | UFO | 16h |
| 30 | 1.1.9 | **首页** | 8d? | 2012-12-21 | 2012-12-28 |  | 30d |  |  | 郭俊/殷渝/UFO | 120h |
| 31 | 1.1.9.1 | 首页图片轮询管理 | 1d | 2012-12-21 | 2012-12-21 | 28 | 33d | 0d |  | 殷渝 | 8h |
| 32 | 1.1.9.2 | 大区进展 | 1d? | 2012-12-22 | 2012-12-22 | 31 | 35d | 0d |  | 殷渝 | 8h |
| 33 | 1.1.9.3 | 累计积分排名 | 1d? | 2012-12-23 | 2012-12-23 | 32 | 35d |  |  | 殷渝 | 8h |
| 34 | 1.1.9.4 | 权限控制设定 | 4d | 2012-12-25 | 2012-12-28 | 18, 31 | 30d |  |  | 郭俊/殷渝 | 32h |
| 35 | 1.2 | **前后台网站集成测试** | 3d? | 2012-12-30 | 2013-01-01 | 2 | 29d | 0d |  | 郭俊/miya | 48h |
| 36 | 1.2.1 | 集成发布 | 1d? | 2012-12-30 | 2012-12-30 |  | 29d | 0d |  | 郭俊 | 8h |
| 37 | 1.2.2 | 集成测试及Bug修复 | 2d | 2012-12-31 | 2013-01-01 | 36 | 29d |  |  | miya/郭俊 | 16h |
| 38 | 2 | **短信平台功能** | 1628d? | 2006-10-27 | 2013-01-06 |  | 29d |  |  | 张建 | 13064h |
| 39 | 2.1 | 短信激活 | 3d | 2006-10-27 | 2006-10-31 |  | 1642d | 0d |  |  |  |
| 40 | 2.2 | 短信答题 | 3d | 2006-11-01 | 2006-11-03 | 39 | 1642d | 0d |  |  |  |
| 41 | 2.3 | 短信查分 | 3d | 2006-11-06 | 2006-11-08 | 40 | 1642d | 0d |  |  |  |
| 42 | 2.4 | 短信提醒 | 3d | 2006-11-09 | 2006-11-13 | 41 | 1642d | 0d |  |  |  |
| 43 | 2.5 | 测试环境发布 | 3d | 2006-11-14 | 2006-11-16 | 42 | 1642d |  |  |  |  |
| 44 | 2.6 | **短信平台和网站集成** | 5d? | 2013-01-02 | 2013-01-06 | 35 | 29d |  |  | 郭俊/miya | 40h |
| 45 | 2.6.1 | 集成发布 | 2d | 2013-01-02 | 2013-01-03 |  | 29d | 0d |  |  |  |
| 46 | 2.6.2 | 功能测试及bug修复 | 2d | 2013-01-04 | 2013-01-05 | 45 | 29d | 0d |  |  |  |
| 47 | 2.6.3 | 压力测试 | 1d? | 2013-01-06 | 2013-01-06 | 46 | 29d |  |  |  |  |
| 48 | 3 | **第三阶段--系统验收阶段** | 34d | 2013-01-02 | 2013-02-06 | 1 | 0d |  |  |  |  |
| 49 | 3.1 | 验收和上线 | 1d | 2013-01-02 | 2013-01-02 |  | 29d |  |  |  |  |
| 50 | 3.2 | 试运行 | 2d | 2013-02-01 | 2013-02-04 | 49 | 0d |  | start no earlier than 2013-02-01 |  |  |
| 51 | 3.3 | 正式上线 | 2d | 2013-02-05 | 2013-02-06 | 50 | 0d |  |  |  |  |

| ID | WBS | Task | Duration | Start | Finish | Total slack | Constraint | Resources | Work |
| --- | --- | --- | --- | --- | --- | --- | --- | --- | --- |
| 52 | 4 | **项目沟通** | 71d? | 2012-11-19 | 2013-01-30 | 5d |  |  | 48h |
| 53 | 4.1 | 第一次Review与交流会议 | 1d? | 2012-11-19 | 2012-11-19 | 75d | start no earlier than 2012-11-19 | 王理强/Basin | 8h |
| 54 | 4.2 | 第二次Review与交流会议 | 1d? | 2012-12-05 | 2012-12-05 | 61d | start no earlier than 2012-12-05 | 王理强/Basin | 8h |
| 55 | 4.3 | 第三次Review与交流会议 | 1d? | 2012-12-19 | 2012-12-19 | 47d | start no earlier than 2012-12-19 | 王理强/Basin | 8h |
| 56 | 4.4 | 第四次Review与交流会议 | 1d? | 2012-12-28 | 2012-12-28 | 38d | start no earlier than 2012-12-28 | 王理强/Basin | 8h |
| 57 | 4.5 | 第五次Review与交流会议 | 1d? | 2013-01-16 | 2013-01-16 | 19d | start no earlier than 2013-01-16 | 王理强/Basin | 8h |
| 58 | 4.6 | 第六次Review与交流会议 | 1d? | 2013-01-30 | 2013-01-30 | 5d | start no earlier than 2013-01-30 | 王理强/Basin | 8h |
